id,wbs,task,duration_weeks,predecessors,es,ef,start_date,finish_date,R,A,C,I,deliverable,type,lf,ls,slack_weeks,critical
A,1.1,"Проверка региона, полетов и схемы АХР",2,,0,2,2026-10-19,2026-11-01,Юрист,Директор,Агроном;Операционный руководитель,Инвестор,Осуществимость разрешительного маршрута; не выданное разрешение,[ДОПУЩЕНИЕ],3,1,1,False
B,1.2,Интервью и предварительные заявки хозяйств,6,,0,6,2026-10-19,2026-11-29,Продажи,Директор,Агроном,Инвестор,20 интервью; заявки на 6000 га-проходов и 4000 га-обследований,[ДОПУЩЕНИЕ],6,0,0,True
C,1.3,"ООО, договоры, учет и страховой проект",3,A,2,5,2026-11-02,2026-11-22,Юрист,Директор,Бухгалтер,Инвестор,ООО; договоры; страховые предложения,[ДОПУЩЕНИЕ],6,3,1,False
D,2.1,Инвестиционное решение и финансирование,1,B;C,6,7,2026-11-30,2026-12-06,Директор,Инвестор,Бухгалтер;Юрист,Команда,"Условия траншей и лимит необратимых расходов; 9,5 млн только для базы; КП и обязательства клиентов проверяются до закупки",[ДОПУЩЕНИЕ],7,6,0,True
E,2.2,Закупка и приемка оборудования,5,D,7,12,2026-12-07,2027-01-10,Операционный руководитель,Директор,Агроном,Бухгалтер,Комплектность; серийные номера; акты,[ДОПУЩЕНИЕ],12,7,0,True
F,2.3,Подбор и гражданская переподготовка,6,D,7,13,2026-12-07,2027-01-17,Операционный руководитель,Директор,Учебный партнер;Агроном,Инвестор,Два оператора; экзамен и допуск,[ДОПУЩЕНИЕ],15,9,2,False
G,2.4,Разрешительная готовность и учет БВС,6,E,12,18,2027-01-11,2027-02-21,Юрист,Директор,Операционный руководитель,Клиенты,Документы на конкретные БВС/работы; либо no-go,[ДОПУЩЕНИЕ],18,12,0,True
H,3.1,"SOP, CRM, карты и контроль качества",3,E;F,13,16,2027-01-18,2027-02-07,Агроном,Операционный руководитель,Юрист,Продажи,Чек-листы; шаблон отчета; аварийный план,[ДОПУЩЕНИЕ],18,15,2,False
I,3.2,Стендовые и контролируемые приемочные испытания,2,G;H,18,20,2027-02-22,2027-03-07,Второй оператор,Операционный руководитель,Агроном;Клиент,Директор,Акт стендовой приемки; полевой пилот отдельно в K до 30.04.2027,[ДОПУЩЕНИЕ],20,18,0,True
J,3.3,Сезонные договоры и маршрутизация,2,I,20,22,2027-03-08,2027-03-21,Продажи,Директор,Агроном;Клиент,Бухгалтер,10 клиентов; согласованный календарь,[ДОПУЩЕНИЕ],22,20,0,True
M,3.4,Предсезонная готовность и ожидание погодного окна,3,J,22,25,2027-03-22,2027-04-11,Операционный руководитель,Директор,Агроном;Клиент,Инвестор,Повторная проверка разрешений и погодного окна,[ДОПУЩЕНИЕ],25,22,0,True
K,4.1,Первый коммерческий сезон,22,M,25,47,2027-04-12,2027-09-12,Второй оператор,Операционный руководитель,Агроном;Клиент,Директор,6000 га-проходов; 4000 га-обследований,[ДОПУЩЕНИЕ],47,25,0,True
L,4.2,Аудит сезона и решение о продолжении,2,K,47,49,2027-09-13,2027-09-26,Бухгалтер,Директор,Агроном;Операционный руководитель,Инвестор,Факт P&L/ДДС; претензии; продления,[ДОПУЩЕНИЕ],49,47,0,True
